Schedule from GanttProject, 2008-12-04 to 2009-06-26.

## Calendars

- Project calendar: Mon-Fri working; Sat-Sun off. Exceptions (off unless hours are given): 2008-12-08 to 2008-12-10, 2008-12-15 to 2008-12-17, 2008-12-22 to 2008-12-26, 2008-12-29 to 2009-01-02, 2009-01-05 to 2009-01-07, 2009-01-12 to 2009-01-14, 2009-01-19 to 2009-01-21, 2009-01-26 to 2009-01-28, 2009-02-02 to 2009-02-04, 2009-02-09 to 2009-02-11, 2009-02-16 to 2009-02-20, 2009-02-23 to 2009-02-25, 2009-03-02 to 2009-03-04, 2009-03-09 to 2009-03-11, 2009-03-16 to 2009-03-18, 2009-03-23 to 2009-03-25.

## Resources

| Resource | Group |
| --- | --- |
| Henri Darmet |  |
| Florian Mounier | Concepteur Developpeur |

## Schedule

| ID | WBS | Task | Duration | Start | Finish | Predecessors | Complete | Resources |
| --- | --- | --- | --- | --- | --- | --- | --- | --- |
| 1 | 1 | Prototype | 1d | 2008-12-04 | 2008-12-04 |  | 100% | Henri Darmet |
| 2 | 2 | **Internship (PFE)** | 92d | 2008-12-05 | 2009-06-26 | 1 |  |  |
| 3 | 2.1 | Dual Education (Alternance) | 27d | 2008-12-05 | 2009-03-27 |  |  |  |
| 4 | 2.2 | Full Time | 65d | 2009-03-30 | 2009-06-26 | 3 |  |  |
| 5 | 3 | **Project Management** | 92d | 2008-12-05 | 2009-06-26 |  | 12% |  |
| 6 | 3.1 | **Project Setup** | 3d | 2008-12-05 | 2008-12-12 | 1 | 100% |  |
| 7 | 3.1.1 | Platform setup | 1d | 2008-12-05 | 2008-12-05 |  | 100% |  |
| 8 | 3.1.2 | Setting up a temporary svn | 1d | 2008-12-05 | 2008-12-05 |  | 100% |  |
| 9 | 3.1.3 | Code Pre-reorganization | 2d | 2008-12-11 | 2008-12-12 | 7, 8 | 100% |  |
| 10 | 3.2 | Move project to Google Code | 1d | 2009-01-08 | 2009-01-08 |  | 100% |  |
| 11 | 3.3 | Write a script to have a compiled application for each version | 1d | 2009-01-09 | 2009-01-09 | 10 | 100% |  |
| 12 | 3.4 | Wiki creation | 2d | 2009-02-05 | 2009-02-06 |  | 100% |  |
| 13 | 3.5 | Wiki Updating | 77d | 2009-02-12 | 2009-06-26 | 12 | 4% |  |
| 14 | 3.6 | Project's Gantt Diagram | 1d | 2009-02-26 | 2009-02-26 |  | 100% |  |
| 15 | 3.7 | Midterm internship meeting | 1d | 2009-02-27 | 2009-02-27 | 14 |  |  |
| 16 | 4 | **Graphical Layer Abstraction** | 8d | 2008-12-11 | 2009-01-16 |  | 100% |  |
| 17 | 4.1 | Set up a bridge for graphic engines | 2d | 2008-12-11 | 2008-12-12 |  | 100% |  |
| 18 | 4.2 | Integration of GWT Incubator graphic engine | 6d | 2008-12-18 | 2009-01-16 | 17 | 100% |  |
| 19 | 5 | **Visual Interface** | 8d | 2009-01-08 | 2009-01-30 |  | 100% |  |
| 20 | 5.1 | Creation | 2d | 2009-01-08 | 2009-01-09 |  | 100% |  |
| 21 | 5.2 | Visual Interface Code spearation | 2d | 2009-01-15 | 2009-01-16 | 20 | 100% |  |
| 22 | 5.3 | Improvements | 2d | 2009-01-22 | 2009-01-23 | 21 | 100% |  |
| 23 | 5.4 | Context Menu | 1d | 2009-01-29 | 2009-01-29 | 22 | 100% |  |
| 24 | 5.5 | HTML Loading Screen | 1d | 2009-01-30 | 2009-01-30 | 23 | 100% |  |

Notes:
- 1: Non mesuré

| ID | WBS | Task | Type | Duration | Start | Finish | Predecessors | Complete |
| --- | --- | --- | --- | --- | --- | --- | --- | --- |
| 25 | 6 | **Cleanness of code** |  | 32d | 2009-01-23 | 2009-04-17 |  | 42% |
| 26 | 6.1 | Code cleanup |  | 32d | 2009-01-23 | 2009-04-17 |  | 30% |
| 27 | 6.2 | **Code Rewrite** |  | 21d | 2009-01-23 | 2009-04-02 |  | 70% |
| 28 | 6.2.1 | Dynamic Edition System |  | 15d | 2009-01-23 | 2009-03-20 |  | 80% |
| 29 | 6.2.2 | Artifacts Drawing |  | 19d | 2009-01-30 | 2009-04-02 |  | 60% |
| 30 | 7 | Code JavaDoc |  | 25d | 2009-04-06 | 2009-05-08 |  |  |
| 31 | 8 | **Interaction emulation layer** |  | 7d | 2009-05-11 | 2009-05-19 | 30 |  |
| 32 | 8.1 | Keyboard Part |  | 2d | 2009-05-11 | 2009-05-12 |  |  |
| 33 | 8.2 | Mouse Part |  | 2d | 2009-05-13 | 2009-05-14 | 32 |  |
| 34 | 8.3 | Test code |  | 3d | 2009-05-15 | 2009-05-19 | 33 |  |
| 35 | 9 | **Adding other UML diagrams** |  | 25d | 2009-05-20 | 2009-06-23 | 31 |  |
| 36 | 9.1 | Adding object diagram for code generation |  | 25d | 2009-05-20 | 2009-06-23 |  |  |
| 37 | 9.2 | Adding other UML diagrams |  | 1d | 2009-05-20 | 2009-05-20 |  |  |
| 38 | 10 | If available time remaining : Saving diagram in xml like format | milestone | 0d | 2009-06-24 | 2009-06-24 | 36 |  |
| 39 | 11 | If available time remaining : Setting a server side to save diagrams like documents in google docs | milestone | 0d | 2009-06-24 | 2009-06-24 | 36 |  |
